Schedule from MS Project, 2016-08-29 to 2016-11-22, costs in R$, A marks actual dates.

## Calendars

- Padrão: Mon-Fri 09:00-12:00, 13:00-18:00; Sat-Sun off.

## Resources

| Resource | Rate |
| --- | --- |
| Cliente |  |
| Cristopher | 100 |
| Davi | 100 |
| Vitor | 100 |
| Vagner | 100 |
| Pedro | 100 |
| Gerente de Projetos | 200 |

## Schedule

| ID | WBS | Task | Duration | Start | Finish | Predecessors | Complete | Actual finish | Resources | Work | Actual work | Cost | Baseline cost | Actual cost |
| --- | --- | --- | --- | --- | --- | --- | --- | --- | --- | --- | --- | --- | --- | --- |
| 1 | 1 | **CrowdFunding Project** | 62.12d | 2016-08-29 A | 2016-11-22 |  | 100% | 2016-11-17 |  | 221.96h | 221.96h | 22,371 | 20,270 | 22,371 |
| 2 | 1.1 | **Prospecção** | 10.12d | 2016-08-29 A | 2016-09-12 A |  | 100% |  |  | 9.85h | 9.85h | 1,010 | 1,000 | 1,010 |
| 3 | 1.1.1 | **PTEC** | 6.66d | 2016-08-29 A | 2016-09-06 A |  | 100% |  |  | 8.35h | 8.35h | 860 | 800 | 860 |
| 4 | 1.1.1.1 | Estudar Domínio de Aplicação | 0.11d | 2016-08-29 A | 2016-08-29 A |  | 100% |  | Pedro | 0.85h | 0.85h | 85 | 100 | 85 |
| 5 | 1.1.1.2 | Encontrar-se com Fornecedor de Requisitos | 0.5d | 2016-08-29 A | 2016-08-29 A | 4 | 100% |  | Davi [25%] | 1h | 1h | 100 | 200 | 100 |
| 6 | 1.1.1.3 | Redigir PTEC | 2.48d | 2016-08-30 A | 2016-09-01 A | 5 | 100% |  | Cristopher [30.3%] | 6h | 6h | 600 | 400 | 600 |
| 7 | 1.1.1.4 | Revisar PTEC | 0.12d | 2016-09-05 A | 2016-09-05 A | 6 | 100% |  | Pedro [25%] | 0.25h | 0.25h | 25 | 50 | 25 |
| 8 | 1.1.1.5 | Aprovar PTEC | 0.03d | 2016-09-06 A | 2016-09-06 A | 7 | 100% |  | Gerente de Projetos | 0.25h | 0.25h | 50 | 50 | 50 |
| 9 | 1.1.2 | **EPT - Estimativa Preliminar de Tamanho** | 2.62d | 2016-09-06 A | 2016-09-09 A |  | 100% |  |  | 1h | 1h | 100 | 125 | 100 |
| 10 | 1.1.2.1 | Estimar Tamanho do Projeto | 1.06d | 2016-09-06 A | 2016-09-07 A | 8 | 100% |  | Vagner [5.9%] | 0.5h | 0.5h | 50 | 100 | 50 |
| 11 | 1.1.2.2 | Revisar Estimativa de Tamanho do Projeto | 0.5d | 2016-09-08 A | 2016-09-09 A | 10 | 100% |  | Vitor [12.5%] | 0.5h | 0.5h | 50 | 25 | 50 |
| 12 | 1.1.3 | **CRP e ORP - Cronograma e Orçamentos Preliminar** | 3.38d | 2016-09-06 A | 2016-09-12 A |  | 100% |  |  | 0.5h | 0.5h | 50 | 75 | 50 |
| 13 | 1.1.3.1 | Elaborar Cronograma e Orçamento Preliminar | 0.52d | 2016-09-06 A | 2016-09-07 A | 8 | 100% |  | Vitor [6%] | 0.25h | 0.25h | 25 | 50 | 25 |
| 14 | 1.1.3.2 | Revisar Cronograma e Orçamento Preliminar | 0.25d | 2016-09-09 A | 2016-09-12 A | 13 | 100% |  | Vagner [12.5%] | 0.25h | 0.25h | 25 | 25 | 25 |
| 15 | 1.2 | **Planejamento** | 3d? | 2016-09-06 A | 2016-09-09 A |  | 100% |  |  | 9.85h | 9.85h | 1,135 | 850 | 1,135 |
| 16 | 1.2.1 | **Plano de Projeto** | 1.25d? | 2016-09-06 A | 2016-09-07 A |  | 100% |  |  | 3.35h | 3.35h | 335 | 250 | 335 |
| 17 | 1.2.1.1 | Elaborar Plano de Projeto | 0.51d? | 2016-09-06 A | 2016-09-07 A | 8 | 100% |  | Davi | 2.85h | 2.85h | 285 | 200 | 285 |
| 18 | 1.2.1.2 | Revisar Plano de Projeto | 0.25d? | 2016-09-07 A | 2016-09-07 A | 17 | 100% |  | Cristopher [25%] | 0.5h | 0.5h | 50 | 50 | 50 |
| 19 | 1.2.2 | **EAP** | 1.5d? | 2016-09-06 A | 2016-09-08 A |  | 100% |  |  | 2.5h | 2.5h | 250 | 250 | 250 |
| 20 | 1.2.2.1 | Elaborar EAP | 1.12d? | 2016-09-06 A | 2016-09-07 A | 8 | 100% |  | Pedro | 2h | 2h | 200 | 200 | 200 |
| 21 | 1.2.2.2 | Revisar EAP | 0.5d? | 2016-09-07 A | 2016-09-08 A | 20 | 100% |  | Vitor [12.5%] | 0.5h | 0.5h | 50 | 50 | 50 |
| 22 | 1.2.3 | **ETD - Estimativa de Tamanho Definitiva** | 1.5d? | 2016-09-06 A | 2016-09-08 A |  | 100% |  |  | 2.5h | 2.5h | 250 | 350 | 250 |
| 23 | 1.2.3.1 | Elaborar ETD | 1d? | 2016-09-06 A | 2016-09-07 A | 8 | 100% |  | Vagner [25%] | 2h | 2h | 200 | 300 | 200 |
| 24 | 1.2.3.2 | Revisar ETD | 0.5d? | 2016-09-07 A | 2016-09-08 A | 23 | 100% |  | Cristopher [12.5%] | 0.5h | 0.5h | 50 | 50 | 50 |

| ID | WBS | Task | Duration | Start | Finish | Predecessors | Complete | Resources | Work | Actual work | Cost | Baseline cost | Actual cost |
| --- | --- | --- | --- | --- | --- | --- | --- | --- | --- | --- | --- | --- | --- |
| 25 | 1.2.4 | **Revisão e Aprovação - Planejamento** | 1d? | 2016-09-08 A | 2016-09-09 A |  | 100% |  | 1.5h | 1.5h | 300 | 100 | 300 |
| 26 | 1.2.4.1 | Aprovar Plano de Projeto | 1d? | 2016-09-08 A | 2016-09-09 A | 18 | 100% | Gerente de Projetos [6.2%] | 0.5h | 0.5h | 100 | 20 | 100 |
| 27 | 1.2.4.2 | Aprovar EAP | 1d? | 2016-09-08 A | 2016-09-09 A | 21 | 100% | Gerente de Projetos [6.2%] | 0.5h | 0.5h | 100 | 40 | 100 |
| 28 | 1.2.4.3 | Aprovar ETD | 1d? | 2016-09-08 A | 2016-09-09 A | 24 | 100% | Gerente de Projetos [6.2%] | 0.5h | 0.5h | 100 | 40 | 100 |
| 29 | 1.3 | **Análise** | 5.25d? | 2016-09-09 A | 2016-09-16 A |  | 100% |  | 25.21h | 25.21h | 2,521 | 2,600 | 2,521 |
| 30 | 1.3.1 | **Documento de Requisitos** | 4.34d? | 2016-09-09 A | 2016-09-16 A |  | 100% |  | 22.71h | 22.71h | 2,271 | 2,400 | 2,271 |
| 31 | 1.3.1.1 | Reunir-se com cliente | 0.5d? | 2016-09-09 A | 2016-09-12 A | 25 | 100% | Pedro [25%] | 1h | 1h | 100 | 200 | 100 |
| 32 | 1.3.1.2 | Elaborar DRE | 0.15d? | 2016-09-12 A | 2016-09-13 A | 31 | 100% | Cristopher [312.5%]; Davi [312.5%]; Vagner [312.5%]; Vitor [312.5%]; Pedro | 15h | 15h | 1,500 | 1,800 | 1,500 |
| 33 | 1.3.1.3 | Revisar DRE | 0.56d? | 2016-09-13 A | 2016-09-13 A | 32 | 100% | Vagner; Vitor | 3h | 3h | 300 | 200 | 300 |
| 34 | 1.3.1.4 | Submeter DRE para aprovação do cliente | 1.34d? | 2016-09-14 A | 2016-09-16 A | 33 | 100% | Cristopher | 3.71h | 3.71h | 371 | 200 | 371 |
| 35 | 1.3.2 | **MRB - Matriz de Rastreabilidade** | 1.25d? | 2016-09-15 A | 2016-09-16 A |  | 100% |  | 2.5h | 2.5h | 250 | 200 | 250 |
| 36 | 1.3.2.1 | Elaborar Matriz de Rastreabilidade | 0.33d? | 2016-09-15 A | 2016-09-16 A | 34 | 100% | Davi [75%] | 2h | 2h | 200 | 150 | 200 |
| 37 | 1.3.2.2 | Revisar Matriz de Rastreabilidade | 0.25d? | 2016-09-16 A | 2016-09-16 A | 36 | 100% | Cristopher [25%] | 0.5h | 0.5h | 50 | 50 | 50 |
| 38 | 1.4 | **Modelagem UML** | 3.04d? | 2016-09-19 A | 2016-09-22 A |  | 100% |  | 6.3h | 6.3h | 630 | 240 | 630 |
| 39 | 1.4.1 | **Diagrama de Classes** | 3.04d? | 2016-09-19 A | 2016-09-22 A |  | 100% |  | 3.3h | 3.3h | 330 | 170 | 330 |
| 40 | 1.4.1.1 | Elaborar Diagrama de Classes | 1.12d? | 2016-09-19 A | 2016-09-20 A | 29 | 100% | Vagner | 2h | 2h | 200 | 100 | 200 |
| 41 | 1.4.1.2 | Revisar Diagrama de Classes | 1d? | 2016-09-20 A | 2016-09-21 A | 40 | 100% | Vitor [6.2%] | 0.5h | 0.5h | 50 | 20 | 50 |
| 42 | 1.4.1.3 | Atualizar MRB | 1.04d? | 2016-09-21 A | 2016-09-22 A | 41 | 100% | Pedro | 0.8h | 0.8h | 80 | 50 | 80 |
| 43 | 1.4.2 | **MER - Modelo Entidade Relacionamento** | 2d? | 2016-09-19 A | 2016-09-21 A |  | 100% |  | 3h | 3h | 300 | 70 | 300 |
| 44 | 1.4.2.1 | Elaborar MER | 1d? | 2016-09-19 A | 2016-09-20 A | 29 | 100% | Vagner [25%] | 2h | 2h | 200 | 50 | 200 |
| 45 | 1.4.2.2 | Revisar MER | 1d? | 2016-09-20 A | 2016-09-21 A | 44 | 100% | Davi [12.5%] | 1h | 1h | 100 | 20 | 100 |
| 46 | 1.5 | **Implementação/Teste** | 26.25d? | 2016-09-22 A | 2016-10-31 A |  | 100% |  | 144h | 144h | 14,400 | 13,370 | 14,400 |
| 47 | 1.5.1 | **Release 01** | 9d? | 2016-09-22 A | 2016-10-05 A |  | 100% |  | 36h | 36h | 3,600 | 3,360 | 3,600 |
| 48 | 1.5.1.1 | **Implementação** | 8.06d? | 2016-09-22 A | 2016-10-04 A |  | 100% |  | 32h | 32h | 3,200 | 2,890 | 3,200 |
| 49 | 1.5.1.1.1 | [RFS01] Adicionar Usuário | 1.06d | 2016-09-22 A | 2016-09-23 A | 38 | 100% | Davi [200%] | 4h | 4h | 400 | 300 | 400 |
| 50 | 1.5.1.1.2 | [RFS02] Editar Usuário | 1.06d | 2016-09-23 A | 2016-09-26 A | 49 | 100% | Vagner [200%] | 4h | 4h | 400 | 250 | 400 |
| 51 | 1.5.1.1.3 | [RFS03] Consultar Usuário | 1.06d | 2016-09-26 A | 2016-09-27 A | 50 | 100% | Vitor [200%] | 4h | 4h | 400 | 250 | 400 |
| 52 | 1.5.1.1.4 | [RFS04] Excluir Usuário | 1.06d | 2016-09-27 A | 2016-09-28 A | 51 | 100% | Cristopher [200%] | 4h | 4h | 400 | 600 | 400 |
| 53 | 1.5.1.1.5 | [RFS05] Cadastrar Projeto Candidato | 1.06d? | 2016-09-28 A | 2016-09-29 A | 52 | 100% | Pedro [200%] | 4h | 4h | 400 | 330 | 400 |
| 54 | 1.5.1.1.6 | [RFS06] Listar Projetos Candidatos | 1.06d? | 2016-09-29 A | 2016-09-30 A | 53 | 100% | Vitor [200%] | 4h | 4h | 400 | 280 | 400 |
| 55 | 1.5.1.1.7 | [RFS07] Alterar Projetos Candidatos | 1.06d? | 2016-09-30 A | 2016-10-03 A | 54 | 100% | Vagner [200%] | 4h | 4h | 400 | 300 | 400 |
| 56 | 1.5.1.1.8 | [RFS08] Remover Projetos Candidatos | 1.06d? | 2016-10-03 A | 2016-10-04 A | 55 | 100% | Davi [200%] | 4h | 4h | 400 | 580 | 400 |

| ID | WBS | Task | Duration | Start | Finish | Predecessors | Complete | Resources | Work | Actual work | Cost | Baseline cost | Actual cost |
| --- | --- | --- | --- | --- | --- | --- | --- | --- | --- | --- | --- | --- | --- |
| 57 | 1.5.1.2 | **Teste - Selenium** | 1d? | 2016-10-04 A | 2016-10-05 A |  | 100% |  | 4h | 4h | 400 | 470 | 400 |
| 58 | 1.5.1.2.1 | Testar [RFS01] | 1d? | 2016-10-04 A | 2016-10-05 A | 48 | 100% | Cristopher [6.2%] | 0.5h | 0.5h | 50 | 80 | 50 |
| 59 | 1.5.1.2.2 | Testar [RFS02] | 1d | 2016-10-04 A | 2016-10-05 A | 48 | 100% | Pedro [6.2%] | 0.5h | 0.5h | 50 | 60 | 50 |
| 60 | 1.5.1.2.3 | Testar [RFS03] | 1d | 2016-10-04 A | 2016-10-05 A | 48 | 100% | Davi [6.2%] | 0.5h | 0.5h | 50 | 40 | 50 |
| 61 | 1.5.1.2.4 | Testar [RFS04] | 1d? | 2016-10-04 A | 2016-10-05 A | 48 | 100% | Vagner [6.2%] | 0.5h | 0.5h | 50 | 70 | 50 |
| 62 | 1.5.1.2.5 | Testar [RFS05] | 1d? | 2016-10-04 A | 2016-10-05 A | 48 | 100% | Pedro [6.2%] | 0.5h | 0.5h | 50 | 40 | 50 |
| 63 | 1.5.1.2.6 | Testar [RFS06] | 1d? | 2016-10-04 A | 2016-10-05 A | 48 | 100% | Vitor [6.2%] | 0.5h | 0.5h | 50 | 50 | 50 |
| 64 | 1.5.1.2.7 | Testar [RFS07] | 1d? | 2016-10-04 A | 2016-10-05 A | 48 | 100% | Vagner [6.2%] | 0.5h | 0.5h | 50 | 30 | 50 |
| 65 | 1.5.1.2.8 | Testar [RFS08] | 1d? | 2016-10-04 A | 2016-10-05 A | 48 | 100% | Davi [6.2%] | 0.5h | 0.5h | 50 | 100 | 50 |
| 66 | 1.5.2 | **Release 02** | 9d? | 2016-10-05 A | 2016-10-18 A |  | 100% |  | 36h | 36h | 3,600 | 3,030 | 3,600 |
| 67 | 1.5.2.1 | **Implementação** | 8d? | 2016-10-05 A | 2016-10-17 A |  | 100% |  | 32h | 32h | 3,200 | 2,800 | 3,200 |
| 68 | 1.5.2.1.1 | [RFS09] Cadastrar Critério de Avaliação | 1d? | 2016-10-05 A | 2016-10-06 A | 57 | 100% | Vagner [50%] | 4h | 4h | 400 | 230 | 400 |
| 69 | 1.5.2.1.2 | [RFS10] Listar Critério de Avaliação | 1d? | 2016-10-06 A | 2016-10-07 A | 68 | 100% | Davi [50%] | 4h | 4h | 400 | 280 | 400 |
| 70 | 1.5.2.1.3 | [RFS11] Alterar Critério de Avaliação | 1d? | 2016-10-07 A | 2016-10-10 A | 69 | 100% | Vitor [50%] | 4h | 4h | 400 | 270 | 400 |
| 71 | 1.5.2.1.4 | [RFS12] Desativar Critério de Avaliação | 1d? | 2016-10-10 A | 2016-10-11 A | 70 | 100% | Cristopher [50%] | 4h | 4h | 400 | 320 | 400 |
| 72 | 1.5.2.1.5 | [RFS13] Avaliar Projeto Candidato | 1d? | 2016-10-11 A | 2016-10-12 A | 71 | 100% | Pedro [50%] | 4h | 4h | 400 | 430 | 400 |
| 73 | 1.5.2.1.6 | [RFS14] Consultar Avaliação do Projeto Candidato | 1d? | 2016-10-12 A | 2016-10-13 A | 72 | 100% | Davi [50%] | 4h | 4h | 400 | 410 | 400 |
| 74 | 1.5.2.1.7 | [RFS15] Alterar Avaliação do Projeto Candidato | 1d? | 2016-10-13 A | 2016-10-14 A | 73 | 100% | Cristopher [50%] | 4h | 4h | 400 | 430 | 400 |
| 75 | 1.5.2.1.8 | [RFS19] Aprovar Projeto Candidato | 1d? | 2016-10-14 A | 2016-10-17 A | 74 | 100% | Vitor [50%] | 4h | 4h | 400 | 430 | 400 |
| 76 | 1.5.2.2 | **Teste - Selenium** | 1d? | 2016-10-17 A | 2016-10-18 A |  | 100% |  | 4h | 4h | 400 | 230 | 400 |
| 77 | 1.5.2.2.1 | Testar [RFS09] | 1d? | 2016-10-17 A | 2016-10-18 A | 67 | 100% | Vagner [6.2%] | 0.5h | 0.5h | 50 | 20 | 50 |
| 78 | 1.5.2.2.2 | Testar [RFS10] | 1d? | 2016-10-17 A | 2016-10-18 A | 67 | 100% | Pedro [6.2%] | 0.5h | 0.5h | 50 | 10 | 50 |
| 79 | 1.5.2.2.3 | Testar [RFS11] | 1d? | 2016-10-17 A | 2016-10-18 A | 67 | 100% | Vagner [6.2%] | 0.5h | 0.5h | 50 | 10 | 50 |
| 80 | 1.5.2.2.4 | Testar [RFS12] | 1d? | 2016-10-17 A | 2016-10-18 A | 67 | 100% | Pedro [6.2%] | 0.5h | 0.5h | 50 | 40 | 50 |
| 81 | 1.5.2.2.5 | Testar [RFS13] | 1d? | 2016-10-17 A | 2016-10-18 A | 67 | 100% | Cristopher [6.2%] | 0.5h | 0.5h | 50 | 30 | 50 |
| 82 | 1.5.2.2.6 | Testar [RFS14] | 1d? | 2016-10-17 A | 2016-10-18 A | 67 | 100% | Vagner [6.2%] | 0.5h | 0.5h | 50 | 50 | 50 |
| 83 | 1.5.2.2.7 | Testar [RFS15] | 1d? | 2016-10-17 A | 2016-10-18 A | 67 | 100% | Pedro [6.2%] | 0.5h | 0.5h | 50 | 70 | 50 |
| 84 | 1.5.2.2.8 | Testar [RFS19] | 1d? | 2016-10-17 A | 2016-10-18 A | 67 | 100% | Vagner [6.2%] | 0.5h | 0.5h | 50 | 60 | 50 |

| ID | WBS | Task | Type | Duration | Start | Finish | Predecessors | Complete | Resources | Work | Actual work | Cost | Baseline cost | Actual cost |
| --- | --- | --- | --- | --- | --- | --- | --- | --- | --- | --- | --- | --- | --- | --- |
| 85 | 1.5.3 | **Release 03** |  | 8.25d? | 2016-10-18 A | 2016-10-29 A |  | 100% |  | 45h | 45h | 4,500 | 5,060 | 4,500 |
| 86 | 1.5.3.1 | **Implementação** |  | 8d? | 2016-10-18 A | 2016-10-28 A |  | 100% |  | 40h | 40h | 4,000 | 4,240 | 4,000 |
| 87 | 1.5.3.1.1 | [RFS16] Cadastrar Valor de Repasse Financeiro | manual | 0.5d? | 2016-10-18 A | 2016-10-18 A |  | 100% | Davi | 4h | 4h | 400 | 520 | 400 |
| 88 | 1.5.3.1.2 | [RFS17] Consultar Valor de Repasse Financeiro | manual | 0.5d? | 2016-10-18 A | 2016-10-18 A |  | 100% | Cristopher | 4h | 4h | 400 | 490 | 400 |
| 89 | 1.5.3.1.3 | [RFS18] Alterar Valor de Repasse Financeiro |  | 1d? | 2016-10-18 A | 2016-10-19 A | 76 | 100% | Vitor [50%] | 4h | 4h | 400 | 550 | 400 |
| 90 | 1.5.3.1.4 | [RFS20] Consultar Projeto Aprovado |  | 1d? | 2016-10-19 A | 2016-10-20 A | 89 | 100% | Vagner [50%] | 4h | 4h | 400 | 500 | 400 |
| 91 | 1.5.3.1.5 | [RFS21] Finalizar Projeto Aprovado |  | 1d? | 2016-10-20 A | 2016-10-21 A | 90 | 100% | Pedro [50%] | 4h | 4h | 400 | 410 | 400 |
| 92 | 1.5.3.1.6 | [RFS22] Cadastrar Cotas de Financiamento |  | 1d? | 2016-10-21 A | 2016-10-24 A | 91 | 100% | Davi [50%] | 4h | 4h | 400 | 450 | 400 |
| 93 | 1.5.3.1.7 | [RFS23] Consultar Cotas de Financiamento |  | 1d? | 2016-10-24 A | 2016-10-25 A | 92 | 100% | Cristopher [50%] | 4h | 4h | 400 | 320 | 400 |
| 94 | 1.5.3.1.8 | [RFS24] Inserir Edital |  | 1d? | 2016-10-25 A | 2016-10-26 A | 93 | 100% | Vitor [50%] | 4h | 4h | 400 | 310 | 400 |
| 95 | 1.5.3.1.9 | [RFS25] Consultar Edital |  | 1d? | 2016-10-26 A | 2016-10-27 A | 94 | 100% | Pedro [50%] | 4h | 4h | 400 | 310 | 400 |
| 96 | 1.5.3.1.10 | [RFS26] Retificar Edital |  | 1d? | 2016-10-27 A | 2016-10-28 A | 95 | 100% | Davi [50%] | 4h | 4h | 400 | 380 | 400 |
| 97 | 1.5.3.2 | **Teste - Selenium** |  | 0.25d? | 2016-10-28 A | 2016-10-29 A |  | 100% |  | 5h | 5h | 500 | 820 | 500 |
| 98 | 1.5.3.2.1 | Testar [RFS16] | manual | 0.06d? | 2016-10-28 A | 2016-10-28 A |  | 100% | Vitor | 0.5h | 0.5h | 50 | 70 | 50 |
| 99 | 1.5.3.2.2 | Testar [RFS17] | manual | 0.06d? | 2016-10-28 A | 2016-10-28 A |  | 100% | Cristopher | 0.5h | 0.5h | 50 | 80 | 50 |
| 100 | 1.5.3.2.3 | Testar [RFS18] |  | 1d? | 2016-10-28 A | 2016-10-29 A | 86 | 100% | Vitor [6.2%] | 0.5h | 0.5h | 50 | 100 | 50 |
| 101 | 1.5.3.2.4 | Testar [RFS20] |  | 1d? | 2016-10-28 A | 2016-10-29 A | 86 | 100% | Vitor [6.2%] | 0.5h | 0.5h | 50 | 120 | 50 |
| 102 | 1.5.3.2.5 | Testar [RFS21] |  | 1d? | 2016-10-28 A | 2016-10-29 A | 86 | 100% | Vagner [6.2%] | 0.5h | 0.5h | 50 | 50 | 50 |
| 103 | 1.5.3.2.6 | Testar [RFS22] |  | 1d? | 2016-10-28 A | 2016-10-29 A | 86 | 100% | Vagner [6.2%] | 0.5h | 0.5h | 50 | 80 | 50 |
| 104 | 1.5.3.2.7 | Testar [RFS23] |  | 1d? | 2016-10-28 A | 2016-10-29 A | 86 | 100% | Pedro [6.2%] | 0.5h | 0.5h | 50 | 40 | 50 |
| 105 | 1.5.3.2.8 | Testar [RFS24] |  | 1d? | 2016-10-28 A | 2016-10-29 A | 86 | 100% | Pedro [6.2%] | 0.5h | 0.5h | 50 | 90 | 50 |
| 106 | 1.5.3.2.9 | Testar [RFS25] |  | 1d? | 2016-10-28 A | 2016-10-29 A | 86 | 100% | Davi [6.2%] | 0.5h | 0.5h | 50 | 90 | 50 |
| 107 | 1.5.3.2.10 | Testar [RFS26] |  | 1d? | 2016-10-28 A | 2016-10-29 A | 86 | 100% | Cristopher [6.2%] | 0.5h | 0.5h | 50 | 100 | 50 |
| 108 | 1.5.4 | **Release 04** |  | 0d? | 2016-10-29 A | 2016-10-31 A |  | 100% |  | 27h | 27h | 2,700 | 1,920 | 2,700 |
| 109 | 1.5.4.1 | **Implementação** |  | 0d? | 2016-10-29 A | 2016-10-31 A |  | 100% |  | 24h | 24h | 2,400 | 1,690 | 2,400 |
| 110 | 1.5.4.1.1 | [RFS28] Financiar Projeto |  | 1d? | 2016-10-29 A | 2016-10-29 A | 97 | 100% | Davi [50%] | 4h | 4h | 400 | 160 | 400 |
| 111 | 1.5.4.1.2 | [RFS29] Consultar Financiamento |  | 1d? | 2016-10-29 A | 2016-10-29 A | 110 | 100% | Cristopher [50%] | 4h | 4h | 400 | 130 | 400 |
| 112 | 1.5.4.1.3 | [RFS30] Atribuir Recompensa |  | 1d? | 2016-10-29 A | 2016-10-30 A | 111 | 100% | Pedro [50%] | 4h | 4h | 400 | 280 | 400 |
| 113 | 1.5.4.1.4 | [RFS31] Consultar Recompensa |  | 1d? | 2016-10-30 A | 2016-10-30 A | 112 | 100% | Vagner [50%] | 4h | 4h | 400 | 120 | 400 |
| 114 | 1.5.4.1.5 | [RFS34] Gerar Relatório dos Projetos por Categoria |  | 1d? | 2016-10-30 A | 2016-10-30 A | 113 | 100% | Vitor [50%] | 4h | 4h | 400 | 520 | 400 |
| 115 | 1.5.4.1.6 | [RFS35] Gerar Relatório de Investimentos Financeiros |  | 1d? | 2016-10-30 A | 2016-10-31 A | 114 | 100% | Davi [50%] | 4h | 4h | 400 | 480 | 400 |

| ID | WBS | Task | Type | Duration | Start | Finish | Predecessors | Complete | Resources | Work | Actual work | Cost | Baseline cost | Actual cost |
| --- | --- | --- | --- | --- | --- | --- | --- | --- | --- | --- | --- | --- | --- | --- |
| 116 | 1.5.4.2 | **Teste - Selenium** |  | 0d? | 2016-10-31 A | 2016-10-31 A |  | 100% |  | 3h | 3h | 300 | 230 | 300 |
| 117 | 1.5.4.2.1 | Testar [RFS28] | manual | 0.06d | 2016-10-31 A | 2016-10-31 A |  | 100% | Vitor | 0.5h | 0.5h | 50 | 20 | 50 |
| 118 | 1.5.4.2.2 | Testar [RFS29] |  | 1d? | 2016-10-31 A | 2016-10-31 A | 109 | 100% | Vagner [6.2%] | 0.5h | 0.5h | 50 | 20 | 50 |
| 119 | 1.5.4.2.3 | Testar [RFS30] |  | 1d? | 2016-10-31 A | 2016-10-31 A | 109 | 100% | Cristopher [6.2%] | 0.5h | 0.5h | 50 | 40 | 50 |
| 120 | 1.5.4.2.4 | Testar [RFS31] |  | 1d? | 2016-10-31 A | 2016-10-31 A | 109 | 100% | Pedro [6.2%] | 0.5h | 0.5h | 50 | 20 | 50 |
| 121 | 1.5.4.2.5 | Testar [RFS34] |  | 1d? | 2016-10-31 A | 2016-10-31 A | 109 | 100% | Davi [6.2%] | 0.5h | 0.5h | 50 | 70 | 50 |
| 122 | 1.5.4.2.6 | Testar [RFS35] |  | 1d? | 2016-10-31 A | 2016-10-31 A | 109 | 100% | Vitor [6.2%] | 0.5h | 0.5h | 50 | 60 | 50 |
| 123 | 1.6 | **Implantação** |  | 1d? | 2016-10-31 A | 2016-11-01 A |  | 100% |  | 3.5h | 3.5h | 350 | 530 | 350 |
| 124 | 1.6.1 | **PIM - Plano de Implantação** |  | 1d? | 2016-10-31 A | 2016-11-01 A |  | 100% |  | 3.5h | 3.5h | 350 | 530 | 350 |
| 125 | 1.6.1.1 | Elaborar PIM |  | 1d? | 2016-10-31 A | 2016-10-31 A | 116 | 100% | Pedro [25%] | 2h | 2h | 200 | 310 | 200 |
| 126 | 1.6.1.2 | Revisar PIM |  | 1d? | 2016-10-31 A | 2016-11-01 A | 125 | 100% | Vagner [12.5%] | 1h | 1h | 100 | 150 | 100 |
| 127 | 1.6.1.3 | Aprovar PIM |  | 1d? | 2016-11-01 A | 2016-11-01 A | 126 | 100% | Vitor [6.2%] | 0.5h | 0.5h | 50 | 70 | 50 |
| 128 | 1.7 | **Fechamento/Monitoramento e Controle** |  | 1d? | 2016-10-31 A | 2016-11-01 A |  | 100% |  | 13.8h | 13.8h | 1,380 | 1,180 | 1,380 |
| 129 | 1.7.1 | **Monitoramento e Controle** |  | 0.97d? | 2016-10-31 A | 2016-10-31 A |  | 100% |  | 9.8h | 9.8h | 980 | 810 | 980 |
| 130 | 1.7.1.1 | Acompanhar Projeto |  | 1.23d? | 2016-10-31 A | 2016-10-31 A | 46 | 100% | Davi | 9.8h | 9.8h | 980 | 810 | 980 |
| 131 | 1.7.2 | **Gerência de Configuração** |  | 1d? | 2016-10-31 A | 2016-11-01 A |  | 100% |  | 4h | 4h | 400 | 370 | 400 |
| 132 | 1.7.2.1 | Elaborar Branch |  | 1d? | 2016-10-31 A | 2016-10-31 A | 46 | 100% | Cristopher [12.5%] | 1h | 1h | 100 | 120 | 100 |
| 133 | 1.7.2.2 | Realizar Merge da Branch para a Trunk |  | 1d? | 2016-10-31 A | 2016-11-01 A | 132 | 100% | Vitor [37.5%] | 3h | 3h | 300 | 250 | 300 |
| 134 | 1.8 | **Controle de Mudanças** |  | 1d | 2016-11-16 A | 2016-11-17 A |  | 100% |  | 9.45h | 9.45h | 945 | 500 | 945 |
| 135 | 1.8.1 | **RSM - Registro de Solicitação de Mudanças** |  | 1d | 2016-11-16 A | 2016-11-17 A |  | 100% |  | 9.45h | 9.45h | 945 | 500 | 945 |
| 136 | 1.8.1.1 | Registrar mudanças | manual | 1d | 2016-11-16 A | 2016-11-17 A | 46 | 100% | Pedro | 9.45h | 9.45h | 945 | 500 | 945 |
